# Wily_Phased_Deployment

Schedule from MS Project, 2008-01-17 to 2008-05-01.
Computer Associates Intl.

## Calendars

- Standard: Mon-Fri 08:00-12:00, 13:00-17:00; Sat-Sun off.

## Resources

| Resource |
| --- |
| Customer |
| Wily |
| 3rd party |
| APM |

## Schedule

| ID | WBS | Task | Type | Duration | Start | Finish | Predecessors | Total slack | Free slack | Resources | Work |
| --- | --- | --- | --- | --- | --- | --- | --- | --- | --- | --- | --- |
| 1 | 1 | **APM Phased Deployment** |  | 58.25d | 2008-01-17 | 2008-04-08 |  | 0d |  |  | 770h |
| 2 | 1.1 | Project Kickoff and schedule review |  | 1d | 2008-01-17 | 2008-01-17 |  | 0d |  | Customer; APM | 16h |
| 3 | 1.2 | Training |  | 1w | 2008-01-18 | 2008-01-24 | 2 | 69.75d |  | Customer | 40h |
| 4 | 1.3 | Transaction Filtering - level of effort, 3rd party install |  | 2h | 2008-01-18 | 2008-01-18 | 2 | 74.5d |  | Customer; APM | 4h |
| 5 | 1.4 | **Security Assessments** |  | 20d | 2008-01-18 | 2008-02-14 | 2 | 0d |  |  | 320h |
| 6 | 1.4.1 | APM Security Assesssment |  | 4w | 2008-01-18 | 2008-02-14 |  | 0d |  | Customer | 160h |
| 7 | 1.4.2 | Transactions Filtering Security Assesment |  | 4w | 2008-01-18 | 2008-02-14 |  | 49.75d | 0d | Customer | 160h |
| 8 | 1.5 | **Transaction Filtering HW Install** |  | 5d | 2008-02-14 | 2008-02-21 | 7 | 49.75d |  |  | 40h |
| 9 | 1.5.1 | Installation by 3rd party |  | 5d | 2008-02-15 | 2008-02-21 |  | 49.75d |  | 3rd party | 40h |
| 10 | 1.5.2 | Transaction Filtering HW is available for configuration | milestone | 0d | 2008-02-14 | 2008-02-14 |  | 49.75d | 0d | 3rd party |  |
| 11 | 1.6 | **Application Assessments** |  | 26.5d | 2008-02-15 | 2008-03-24 | 6 | 0d |  |  | 264h |
| 12 | 1.6.1 | MS Sizing and Capacity Forecast |  | 0.5d | 2008-02-15 | 2008-02-15 |  | 0d |  | APM; Customer | 8h |
| 13 | 1.6.2 | Platform Selection and Ordering |  | 1d | 2008-02-15 | 2008-02-18 | 12 | 0d |  | Customer; APM | 16h |
| 14 | 1.6.3 | MS Hardware Procurement |  | 4w | 2008-02-18 | 2008-03-17 | 13 | 0d |  | Customer | 160h |
| 15 | 1.6.4 | MS HW provisioning |  | 5d | 2008-03-17 | 2008-03-24 | 14 | 0d |  | Customer; 3rd party | 80h |
| 16 | 1.6.5 | MS Hardware is available for installation or upgrade | milestone | 0d | 2008-03-24 | 2008-03-24 | 15 | 0d |  | Customer |  |
| 17 | 1.7 | **APM Gold Agent Configuration** |  | 5.75d | 2008-03-24 | 2008-04-01 | 11 | 0d |  |  | 46h |
| 18 | 1.7.1 | **Each Appilcation or Application Type (duplicate and run parallel, as needed)** |  | 5.75d | 2008-03-24 | 2008-04-01 |  | 0d |  |  | 46h |
| 19 | 1.7.1.1 | QA MS Configuration |  | 2h | 2008-03-24 | 2008-03-24 |  | 0d |  | APM | 2h |
| 20 | 1.7.1.2 | QA Agent Configuration |  | 2h | 2008-03-24 | 2008-03-24 | 19 | 0d |  | APM | 2h |
| 21 | 1.7.1.3 | QA Baselines |  | 2d | 2008-03-25 | 2008-03-26 | 20 | 0d |  | APM | 16h |
| 22 | 1.7.1.4 | QA Dashboards and Alerting |  | 2d | 2008-03-27 | 2008-03-28 | 21 | 0d |  | APM | 16h |
| 23 | 1.7.1.5 | Prod Agent configuration |  | 2h | 2008-03-31 | 2008-03-31 | 22 | 0d |  | APM | 2h |
| 24 | 1.7.1.6 | Prod Dashboards, Reporting and Alerting |  | 1d | 2008-03-31 | 2008-04-01 | 23 | 0d |  | APM | 8h |
| 25 | 1.8 | Ready to Deploy Prod (10%) | milestone | 0d | 2008-04-01 | 2008-04-01 | 24 | 0d |  | Customer; APM |  |
| 26 | 1.9 | Deployment 1st Phase |  | 1w | 2008-04-01 | 2008-04-08 | 25 | 0d |  | Customer | 40h |

Notes:
- 11: Identify the priority applications, estimate complexity and the potential number of metrics, if a direct measurement is not available. / A direct measurement would be obtained during a prior pilot exercise, application audit or firefight, or specific operational experience with Introscope monitoring of the application.

| ID | WBS | Task | Type | Duration | Start | Finish | Predecessors | Total slack | Free slack | Resources | Work |
| --- | --- | --- | --- | --- | --- | --- | --- | --- | --- | --- | --- |
| 27 | 2 | **First Operational Period** |  | 8d | 2008-04-08 | 2008-04-18 | 26 | 0d |  | Customer | 212h |
| 28 | 2.1 | **Alert Integration with 3rd party prodcts** |  | 2.5d | 2008-04-08 | 2008-04-10 |  | 0d |  |  | 20h |
| 29 | 2.1.1 | Alert Integration Design |  | 4h | 2008-04-08 | 2008-04-08 |  | 0d |  | APM | 4h |
| 30 | 2.1.2 | Alert Integration Implementation |  | 2d | 2008-04-08 | 2008-04-10 | 29 | 0d |  | APM | 16h |
| 31 | 2.2 | APM Alert Integtration |  | 4h | 2008-04-10 | 2008-04-11 | 30 | 9.5d | 0d | APM | 4h |
| 32 | 2.3 | Transaction Filtering Alert Integration |  | 4h | 2008-04-10 | 2008-04-11 | 30 | 9.5d | 0d | APM | 4h |
| 33 | 2.4 | Alert Integration Testing with 3rd party Tool |  | 1w | 2008-04-11 | 2008-04-18 | 31, 32 | 9.5d |  | APM; Customer | 80h |
| 34 | 2.5 | **Operational Review and Outage analysis** |  | 5d | 2008-04-10 | 2008-04-17 | 28 | 0d |  |  | 40h |
| 35 | 2.5.1 | Adjust monitoring configuration as appropriate |  | 5d | 2008-04-10 | 2008-04-17 |  | 0d |  | APM | 40h |
| 36 | 3 | Ready to deploy prod (30%) | milestone | 0d | 2008-04-17 | 2008-04-17 | 35 | 0d |  | APM; Customer |  |
| 37 | 4 | Deployment 2nd Phase |  | 2w | 2008-04-17 | 2008-05-01 | 36 | 0d |  | Customer | 80h |
| 38 | 5 | Second Operational Period |  | 1w | 2008-04-17 | 2008-04-24 | 34 | 5d |  | Customer | 40h |
| 39 | 6 | Operational Review and Outage analysis |  | 5d | 2008-01-17 | 2008-01-23 |  | 60.75d | 0d | APM; Customer | 80h |
| 40 | 7 | Adjust monitoring configuration as appropriate |  | 5d | 2008-01-24 | 2008-01-30 | 39 | 60.75d | 0d | APM | 40h |
| 41 | 8 | Ready to deploy prod (60%) | milestone | 0d | 2008-01-30 | 2008-01-30 | 40 | 60.75d | 0d | APM; Customer |  |
| 42 | 9 | Deployment 3rd phase |  | 1w | 2008-01-31 | 2008-02-06 | 41 | 60.75d |  | Customer | 40h |
| 43 | 10 | Third Operational Period |  | 0.2w | 2008-01-31 | 2008-01-31 | 41 | 64.75d |  | Customer | 8h |
| 44 | 11 | Operational Review and Outage analysis |  | 0.2w | 2008-01-17 | 2008-01-17 |  | 73.75d | 0d | APM; Customer | 16h |
| 45 | 12 | Final Recommendations and Project Close |  | 1d | 2008-01-18 | 2008-01-18 | 44 | 73.75d |  | APM; Customer | 16h |
| 47 | 13 | **Transaction Definition for Filtering** |  | 5d | 2008-02-15 | 2008-02-21 | 10 | 49.75d |  |  | 56h |
| 48 | 13.1 | Transaction Promotion |  | 1w | 2008-02-15 | 2008-02-21 |  | 49.75d |  | APM | 40h |
| 49 | 13.2 | Alerting and Reporting |  | 2d | 2008-02-15 | 2008-02-18 |  | 52.75d |  | APM | 16h |
